# 项目进度计划管理

Schedule from MS Project, 2009-11-18 to 2009-12-31, A marks actual dates.
xabc

## Calendars

- 标准: Mon-Fri 08:00-12:00, 13:00-17:00; Sat-Sun off.

## Resources

| Resource |
| --- |
| 王静 |
| 周川 |
| 冯帆 |
| 登天华 |
| 袁辉 |
| 崔波 |
| 系统管理 |
| 邓天华 |

## Schedule

| ID | WBS | Task | Duration | Start | Finish | Predecessors | Complete | Remaining | Total slack | Free slack | Constraint | Resources | Work | Actual work |
| --- | --- | --- | --- | --- | --- | --- | --- | --- | --- | --- | --- | --- | --- | --- |
| 1 | 1 | **人力资源管理系统** | 32d? | 2009-11-18 A | 2009-12-31 |  | 90% | 3.33d? | 0d |  |  | 王静; 周川; 冯帆; 邓天华; 袁辉; 崔波 | 2997.8h | 2455.07h |
| 2 | 1.1 | **需求分析** | 2.16d? | 2009-11-18 A | 2009-11-20 |  | 70% | 0.66d? | 29.84d |  |  |  | 128h | 104.8h |
| 3 | 1.1.1 | 组内讨论 | 1.16d? | 2009-11-18 A | 2009-11-19 |  | 82% | 0.21d? | 29d |  |  | 王静; 周川; 冯帆; 邓天华; 袁辉; 崔波 | 48h | 38h |
| 4 | 1.1.2 | 用户需求说明书 | 1d? | 2009-11-18 A | 2009-11-18 |  | 80% | 0.2d? | 29d |  |  | 崔波; 王静 | 16h | 12.8h |
| 5 | 1.1.3 | 项目开发计划 | 1d? | 2009-11-18 | 2009-11-18 |  |  |  | 29d |  |  |  |  |  |
| 6 | 1.1.4 | 数据库编写规范 | 1d? | 2009-11-18 A | 2009-11-18 A |  | 100% |  |  |  |  | 邓天华; 冯帆 | 16h | 16h |
| 7 | 1.1.5 | 组内评审 | 1.16d? | 2009-11-19 A | 2009-11-20 | 6 | 82% | 0.21d? | 28d |  |  | 王静; 周川; 冯帆; 邓天华; 袁辉; 崔波 | 48h | 38h |
| 8 | 1.2 | **概要计划** | 2.16d? | 2009-11-20 A | 2009-11-24 |  | 85% | 0.33d? | 27.84d |  |  |  | 144h | 117.2h |
| 9 | 1.2.1 | 组内讨论 | 1.15d? | 2009-11-20 A | 2009-11-23 |  | 78% | 0.25d? | 0.85d |  |  | 王静; 周川; 冯帆; 邓天华; 袁辉; 崔波 | 48h | 36h |
| 10 | 1.2.2 | 需求规格说明书 | 2d? | 2009-11-20 A | 2009-11-23 |  | 90% | 0.2d? | 26d |  | finish no earlier than 2009-11-23 | 王静; 周川; 登天华 | 48h | 43.2h |
| 11 | 1.2.3 | 组内评审 | 1.16d? | 2009-11-23 A | 2009-11-24 |  | 82% | 0.21d? | 26d |  | start no earlier than 2009-11-23 | 王静; 周川; 冯帆; 邓天华; 袁辉; 崔波 | 48h | 38h |
| 12 | 1.3 | **详细设计** | 3.77d? | 2009-11-24 A | 2009-11-27 | 9 | 82% | 0.69d? | 24.23d |  |  |  | 176h | 127.2h |
| 13 | 1.3.1 | 组内讨论 | 0.97d? | 2009-11-24 A | 2009-11-24 |  | 96% | 0.04d? | 27.03d |  | start no earlier than 2009-11-24 | 王静; 周川; 冯帆; 邓天华; 袁辉; 崔波 | 40h | 38h |
| 14 | 1.3.2 | 项目界面规范 | 1d? | 2009-11-24 A | 2009-11-24 |  | 95% | 0.05d? | 27d |  | start no earlier than 2009-11-24 |  | 8h | 7.6h |
| 15 | 1.3.3 | 绘制E-R图 | 1d? | 2009-11-25 A | 2009-11-25 | 14 | 95% | 0.05d? | 26d |  | finish no earlier than 2009-11-24 | 王静; 周川 | 16h | 15.2h |
| 16 | 1.3.4 | 系统用力图 | 2.95d | 2009-11-24 A | 2009-11-26 |  | 79% | 0.61d | 24.28d | 0d | start no earlier than 2009-11-24 | 崔波; 邓天华 | 32h | 22.29h |
| 17 | 1.3.5 | 数据库设计说明书 | 2d | 2009-11-24 A | 2009-11-25 |  | 95% | 0.1d | 24.77d | 2d | start no earlier than 2009-11-24 | 袁辉; 冯帆 | 32h | 30.4h |
| 18 | 1.3.6 | 组内评审 | 1.16d? | 2009-11-26 A | 2009-11-27 | 16 | 30% | 0.82d? | 24.23d |  |  | 王静; 周川; 冯帆; 邓天华; 袁辉; 崔波 | 48h | 13.72h |
| 19 | 1.4 | **项目编码** | 20d? | 2009-11-28 A | 2009-12-25 | 17 | 94% | 1.28d? | 4d |  |  |  | 877.8h | 823.21h |
| 20 | 1.4.1 | 组内讨论 | 1.15d? | 2009-11-28 A | 2009-12-01 A |  | 100% |  |  |  |  | 王静; 周川; 冯帆; 邓天华; 袁辉; 崔波 | 48h | 48h |
| 21 | 1.4.2 | 系统静态原型 | 4d | 2009-12-01 A | 2009-12-07 A | 20 | 100% |  |  |  | start no earlier than 2009-11-19 |  | 32h | 32h |
| 22 | 1.4.3 | 组内评审 | 1.16d? | 2009-12-03 A | 2009-12-07 A | 21 | 100% |  |  |  |  | 王静; 周川; 冯帆; 邓天华; 袁辉; 崔波 | 48h | 48h |
| 23 | 1.4.4 | 搭建项目框架 | 1d | 2009-12-07 A | 2009-12-08 A | 22 | 100% |  |  |  |  |  | 8h | 8h |
| 24 | 1.4.5 | **分模块编写代码** | 13.64d? | 2009-12-08 A | 2009-12-25 | 23 | 92% | 1.06d? | 4d |  |  |  | 741.8h | 687.21h |
| 25 | 1.4.5.1 | 项目模块分析 | 1d? | 2009-12-08 A | 2009-12-09 A |  | 100% |  |  |  |  | 王静; 周川; 冯帆; 邓天华; 袁辉; 崔波 | 48h | 48h |

| ID | WBS | Task | Duration | Start | Finish | Predecessors | Complete | Remaining | Total slack | Free slack | Constraint | Resources | Work | Actual work |
| --- | --- | --- | --- | --- | --- | --- | --- | --- | --- | --- | --- | --- | --- | --- |
| 26 | 1.4.5.2 | **档案管理** | 5d | 2009-12-09 A | 2009-12-15 |  | 95% | 0.23d | 12d |  |  | 崔波 | 88h | 83.97h |
| 27 | 1.4.5.2.1 | 添加人事档案 | 2d | 2009-12-09 A | 2009-12-10 A |  | 100% |  |  |  | start no earlier than 2009-12-09 |  | 16h | 16h |
| 28 | 1.4.5.2.2 | 档案审核 | 2d | 2009-12-10 A | 2009-12-11 A |  | 100% |  |  |  | start no earlier than 2009-12-10 |  | 16h | 16h |
| 29 | 1.4.5.2.3 | 档案回收站 | 2d | 2009-12-14 A | 2009-12-15 | 28 | 86% | 0.28d | 12d |  |  |  | 16h | 13.8h |
| 30 | 1.4.5.3 | **招聘管理** | 6.64d? | 2009-12-08 A | 2009-12-16 |  | 89% | 0.75d? | 11d |  |  | 邓天华 | 111.87h | 99.29h |
| 31 | 1.4.5.3.1 | 招聘信息 | 1d? | 2009-12-08 A | 2009-12-09 |  | 90% | 0.1d? | 16.64d |  |  |  | 8h | 7.2h |
| 32 | 1.4.5.3.2 | 简历管理 | 2d? | 2009-12-09 A | 2009-12-10 |  | 90% | 0.2d? | 14.5d | 0d | finish no earlier than 2009-12-10 |  | 16h | 14.4h |
| 33 | 1.4.5.3.3 | 试卷管理 | 2d? | 2009-12-10 A | 2009-12-11 |  | 95% | 0.1d? | 14d |  | finish no earlier than 2009-12-11 |  | 16h | 15.2h |
| 34 | 1.4.5.3.4 | 试题管理 | 1d? | 2009-12-11 A | 2009-12-11 | 32 | 90% | 0.1d? | 13.6d | 0d |  |  | 8h | 7.2h |
| 35 | 1.4.5.3.5 | 录用管理 | 1d? | 2009-12-14 A | 2009-12-14 | 34 | 95% | 0.05d? | 12.65d | 1d |  |  | 8h | 7.6h |
| 36 | 1.4.5.3.6 | 试题回收站 | 1d? | 2009-12-16 A | 2009-12-16 | 35 | 65% | 0.35d? | 11d |  | finish no earlier than 2009-12-16 |  | 8h | 5.2h |
| 37 | 1.4.5.4 | **调动管理** | 4.64d? | 2009-12-08 A | 2009-12-14 |  | 91% | 0.4d? | 13d |  |  | 袁辉 | 74.27h | 67.93h |
| 38 | 1.4.5.4.1 | 员工信息 | 1.64d? | 2009-12-08 A | 2009-12-09 |  | 90% | 0.16d? | 15.77d | 0d | finish no earlier than 2009-12-09 |  | 13.13h | 11.82h |
| 39 | 1.4.5.4.2 | 调动审核 | 3d? | 2009-12-10 A | 2009-12-14 | 38 | 92% | 0.23d? | 13d |  |  |  | 24h | 22.14h |
| 40 | 1.4.5.5 | **系统管理** | 3d? | 2009-12-10 A | 2009-12-14 |  | 95% | 0.15d? | 13d |  |  | 周川 | 48h | 45.6h |
| 41 | 1.4.5.5.1 | 用户管理 | 1d? | 2009-12-10 A | 2009-12-10 |  | 95% | 0.05d? | 14.9d | 0d | finish no earlier than 2009-12-10 |  | 8h | 7.6h |
| 42 | 1.4.5.5.2 | 角色管理 | 2d? | 2009-12-11 A | 2009-12-14 | 41 | 95% | 0.1d? | 13d |  |  |  | 16h | 15.2h |
| 43 | 1.4.5.6 | **数据字典管理** | 3d? | 2009-12-10 A | 2009-12-14 |  | 97% | 0.1d? | 13d |  |  | 冯帆 | 48h | 46.4h |
| 44 | 1.4.5.6.1 | 部门管理 | 1d? | 2009-12-10 A | 2009-12-10 A |  | 100% |  |  |  | finish no earlier than 2009-12-10 |  | 8h | 8h |
| 45 | 1.4.5.6.2 | 试题分类管理 | 2d? | 2009-12-11 A | 2009-12-14 |  | 95% | 0.1d? | 13d |  | finish no earlier than 2009-12-14 |  | 16h | 15.2h |
| 46 | 1.4.5.7 | 组内审核及讨论 | 2.21d? | 2009-12-15 A | 2009-12-17 | 44, 43 | 88% | 0.27d? | 6.45d | 0.79d |  | 王静; 周川; 冯帆; 邓天华; 袁辉; 崔波 | 81.67h | 77.58h |
| 47 | 1.4.5.8 | 加班完成各自的模块 | 2d | 2009-12-18 A | 2009-12-21 | 46 | 83% | 0.34d | 4d | 0d |  | 王静; 周川; 冯帆; 邓天华; 袁辉; 崔波 | 82h | 66.44h |
| 48 | 1.4.5.9 | 对遇到难点和错误分析进行解决 | 4d | 2009-12-22 A | 2009-12-25 | 47 | 95% | 0.2d | 4d |  |  | 王静; 周川; 冯帆; 邓天华; 袁辉; 崔波 | 160h | 152h |
| 49 | 1.5 | **项目测试** | 4d? | 2009-12-26 A | 2009-12-31 A |  | 100% |  |  |  |  |  | 136h | 136h |
| 50 | 1.5.1 | 项目运行环境测试 | 1d? | 2009-12-26 A | 2009-12-28 A |  | 100% |  |  |  | start no earlier than 2009-12-28 | 王静; 周川; 冯帆; 邓天华; 袁辉; 崔波 | 40h | 40h |
| 51 | 1.5.2 | 项目运行压力测试 | 1.16d? | 2009-12-29 A | 2009-12-30 A |  | 100% |  |  |  | start no earlier than 2009-12-29 | 王静; 周川; 冯帆; 邓天华; 袁辉; 崔波 | 48h | 48h |
| 52 | 1.5.3 | 项目总结 | 1d? | 2009-12-31 A | 2009-12-31 A |  | 100% |  |  |  | start no earlier than 2009-11-30 | 王静; 周川; 冯帆; 邓天华; 袁辉; 崔波 | 48h | 48h |
